vehicle,activity,trip_id,route,start,end,start_seconds,end_seconds,origin,destination,origin_stop,destination_stop,km_upper,charge_credit_km,remaining_range_credit_km
1,trip,13542081,101,06:00,06:31,21600,23460,22nd Street Station,Lougheed Station,2397,8691,12.1355,0.0,137.8645
1,trip,13542121,101,06:40,07:12,24000,25920,Lougheed Station,22nd Street Station,8689,10929,12.1306,0.0,125.73389999999999
1,trip,13541657,100,07:15,08:05,26100,29100,22nd Street Station,Marpole Loop,5989,745,16.9494,0.0,108.7845
1,trip,13541564,100,08:07,08:47,29220,31620,Marpole Loop,22nd Street Station,12027,10929,15.0353,0.0,93.7492
1,trip,13541650,100,08:59,09:49,32340,35340,22nd Street Station,Marpole Loop,5989,745,16.9494,0.0,76.7998
1,trip,13541584,100,09:49,10:28,35340,37680,Marpole Loop,22nd Street Station,12027,10929,15.3368,0.0,61.46300000000001
1,trip,13541637,100,13:53,14:42,49980,52920,22nd Street Station,Marpole Loop,5989,745,16.9494,0.0,44.51360000000001
2,trip,13542157,101,06:00,06:32,21600,23520,Lougheed Station,22nd Street Station,8689,10929,12.1306,0.0,137.8694
2,trip,13541644,100,06:39,07:27,23940,26820,22nd Street Station,Marpole Loop,5989,745,17.8373,0.0,120.03210000000001
2,trip,13541554,100,07:28,08:06,26880,29160,Marpole Loop,22nd Street Station,12027,10929,15.0353,0.0,104.99680000000001
2,trip,13541702,100,08:13,09:03,29580,32580,22nd Street Station,Marpole Loop,5989,745,16.9494,0.0,88.04740000000001
2,trip,13541610,100,09:03,09:42,32580,34920,Marpole Loop,22nd Street Station,12027,10929,15.0353,0.0,73.0121
2,trip,13542113,101,11:15,11:49,40500,42540,22nd Street Station,Lougheed Station,2397,8691,12.1355,0.0,60.8766
2,trip,13542156,101,12:00,12:36,43200,45360,Lougheed Station,22nd Street Station,8689,10929,12.1306,0.0,48.746
2,trip,13542110,101,12:45,13:21,45900,48060,22nd Street Station,Lougheed Station,2397,8691,12.1355,0.0,36.6105
2,trip,13542132,101,13:29,14:05,48540,50700,Lougheed Station,22nd Street Station,8689,10929,12.1306,0.0,24.4799
3,trip,13541595,100,06:02,06:37,21720,23820,Marpole Loop,22nd Street Station,12027,10929,15.0353,0.0,134.9647
3,trip,13541662,100,06:51,07:39,24660,27540,22nd Street Station,Marpole Loop,5989,745,16.9494,0.0,118.0153
3,trip,13541580,100,07:54,08:32,28440,30720,Marpole Loop,22nd Street Station,12027,10929,15.0353,0.0,102.97999999999999
3,trip,13541635,100,08:38,09:28,31080,34080,22nd Street Station,Marpole Loop,5989,745,16.9494,0.0,86.03059999999999
3,trip,13541599,100,09:37,10:16,34620,36960,Marpole Loop,22nd Street Station,12027,10929,15.0353,0.0,70.99529999999999
3,trip,13542095,101,10:45,11:19,38700,40740,22nd Street Station,Lougheed Station,2397,8691,12.1355,0.0,58.859799999999986
3,trip,13542125,101,11:32,12:07,41520,43620,Lougheed Station,22nd Street Station,8689,10929,12.1306,0.0,46.729199999999985
3,trip,13541711,100,12:08,12:56,43680,46560,22nd Street Station,Marpole Loop,5989,745,17.8373,0.0,28.891899999999985
3,trip,13541571,100,13:09,13:52,47340,49920,Marpole Loop,22nd Street Station,12027,10929,15.0353,0.0,13.856599999999986
4,trip,13541658,100,06:03,06:43,21780,24180,22nd Street Station,Marpole Loop,5989,745,16.9494,0.0,133.0506
4,trip,13541577,100,06:47,07:24,24420,26640,Marpole Loop,22nd Street Station,12027,10929,15.0353,0.0,118.0153
4,trip,13541626,100,07:28,08:18,26880,29880,22nd Street Station,Marpole Loop,5989,745,16.9494,0.0,101.0659
4,trip,13541596,100,09:28,10:07,34080,36420,Marpole Loop,22nd Street Station,12027,10929,15.0353,0.0,86.03059999999999
4,trip,13541671,100,10:41,11:27,38460,41220,22nd Street Station,Marpole Loop,5989,745,16.9494,0.0,69.0812
4,trip,13541550,100,11:41,12:21,42060,44460,Marpole Loop,22nd Street Station,12027,10929,15.0353,0.0,54.045899999999996
5,trip,13541651,100,06:08,06:51,22080,24660,22nd Street Station,Marpole Loop,5989,745,17.8373,0.0,132.1627
5,trip,13541514,100,07:08,07:45,25680,27900,Marpole Loop,22nd Street Station,12027,10929,15.0353,0.0,117.1274
5,trip,13541703,100,07:48,08:38,28080,31080,22nd Street Station,Marpole Loop,5989,745,16.9494,0.0,100.178
5,trip,13541601,100,08:39,09:19,31140,33540,Marpole Loop,22nd Street Station,12027,10929,15.0353,0.0,85.14269999999999
5,trip,13541713,100,10:15,11:03,36900,39780,22nd Street Station,Marpole Loop,5989,745,17.8373,0.0,67.30539999999999
5,trip,13541551,100,11:11,11:50,40260,42600,Marpole Loop,22nd Street Station,12027,10929,15.0353,0.0,52.27009999999999
5,trip,13541669,100,11:55,12:41,42900,45660,22nd Street Station,Marpole Loop,5989,745,16.9494,0.0,35.32069999999999
5,trip,13541560,100,12:54,13:37,46440,49020,Marpole Loop,22nd Street Station,12027,10929,15.3368,0.0,19.983899999999988
6,trip,13541533,100,06:10,06:45,22200,24300,Marpole Loop,22nd Street Station,12027,10929,15.0353,0.0,134.9647
6,trip,13542116,101,07:00,07:35,25200,27300,22nd Street Station,Lougheed Station,2397,8691,12.1355,0.0,122.82919999999999
6,trip,13542145,101,07:38,08:16,27480,29760,Lougheed Station,22nd Street Station,8689,10929,12.1306,0.0,110.69859999999998
6,trip,13542112,101,08:22,09:00,30120,32400,22nd Street Station,Lougheed Station,2397,8691,12.1355,0.0,98.56309999999999
6,trip,13542130,101,09:02,09:38,32520,34680,Lougheed Station,22nd Street Station,8689,10929,12.1306,0.0,86.43249999999999
6,trip,13542098,101,13:15,13:51,47700,49860,22nd Street Station,Lougheed Station,2397,8691,12.1355,0.0,74.297
6,trip,13542140,101,13:59,14:37,50340,52620,Lougheed Station,22nd Street Station,8689,10929,12.1306,0.0,62.166399999999996
7,trip,13541708,100,06:15,06:58,22500,25080,22nd Street Station,Marpole Loop,5989,745,16.9494,0.0,133.0506
7,trip,13541578,100,07:01,07:38,25260,27480,Marpole Loop,22nd Street Station,12027,10929,15.0353,0.0,118.0153
7,trip,13542099,101,07:42,08:17,27720,29820,22nd Street Station,Lougheed Station,2397,8691,12.1355,0.0,105.87979999999999
7,trip,13542124,101,08:22,09:02,30120,32520,Lougheed Station,22nd Street Station,8689,10929,12.1306,0.0,93.74919999999999
7,trip,13541675,100,09:30,10:17,34200,37020,22nd Street Station,Marpole Loop,5989,745,16.9494,0.0,76.79979999999999
7,trip,13541552,100,10:26,11:05,37560,39900,Marpole Loop,22nd Street Station,12027,10929,15.0353,0.0,61.76449999999999
7,trip,13541712,100,11:08,11:56,40080,42960,22nd Street Station,Marpole Loop,5989,745,17.8373,0.0,43.92719999999999
7,trip,13541549,100,12:09,12:51,43740,46260,Marpole Loop,22nd Street Station,12027,10929,15.0353,0.0,28.891899999999993
7,trip,13542111,101,13:44,14:23,49440,51780,22nd Street Station,Lougheed Station,2397,8691,12.1355,0.0,16.756399999999992
8,trip,13542100,101,06:16,06:49,22560,24540,22nd Street Station,Lougheed Station,2397,8691,12.1355,0.0,137.8645
8,trip,13542135,101,07:00,07:36,25200,27360,Lougheed Station,22nd Street Station,8689,10929,12.1306,0.0,125.73389999999999
8,trip,13541638,100,07:41,08:31,27660,30660,22nd Street Station,Marpole Loop,5989,745,17.8373,0.0,107.89659999999999
8,trip,13541525,100,08:33,09:13,30780,33180,Marpole Loop,22nd Street Station,12027,10929,15.0353,0.0,92.8613
8,trip,13542109,101,09:43,10:19,34980,37140,22nd Street Station,Lougheed Station,2397,8691,12.1355,0.0,80.72579999999999
8,trip,13542150,101,10:32,11:06,37920,39960,Lougheed Station,22nd Street Station,8689,10929,12.1306,0.0,68.59519999999999
8,trip,13542091,101,11:45,12:19,42300,44340,22nd Street Station,Lougheed Station,2397,8691,12.1355,0.0,56.45969999999999
8,trip,13542131,101,12:31,13:07,45060,47220,Lougheed Station,22nd Street Station,8689,10929,12.1306,0.0,44.32909999999999
9,trip,13541612,100,06:16,06:53,22560,24780,Marpole Loop,22nd Street Station,12027,10929,15.0353,0.0,134.9647
9,trip,13541627,100,06:57,07:45,25020,27900,22nd Street Station,Marpole Loop,5989,745,16.9494,0.0,118.0153
9,trip,13541597,100,07:47,08:25,28020,30300,Marpole Loop,22nd Street Station,12027,10929,15.3368,0.0,102.6785
9,trip,13542089,101,08:41,09:18,31260,33480,22nd Street Station,Lougheed Station,2397,8691,12.1355,0.0,90.543
9,trip,13542148,101,09:33,10:07,34380,36420,Lougheed Station,22nd Street Station,8689,10929,12.1306,0.0,78.4124
9,trip,13541666,100,13:40,14:26,49200,51960,22nd Street Station,Marpole Loop,5989,745,16.9494,0.0,61.46300000000001
10,trip,13542159,101,06:20,06:52,22800,24720,Lougheed Station,22nd Street Station,8689,10929,12.1306,0.0,137.8694
10,trip,13541722,100,07:09,07:59,25740,28740,22nd Street Station,Marpole Loop,5989,745,17.8373,0.0,120.03210000000001
10,trip,13541607,100,08:00,08:40,28800,31200,Marpole Loop,22nd Street Station,12027,10929,15.0353,0.0,104.99680000000001
11,trip,13541695,100,06:21,07:04,22860,25440,22nd Street Station,Marpole Loop,5989,745,16.9494,0.0,133.0506
11,trip,13541526,100,07:21,07:59,26460,28740,Marpole Loop,22nd Street Station,12027,10929,15.0353,0.0,118.0153
11,trip,13541723,100,08:04,08:54,29040,32040,22nd Street Station,Marpole Loop,5989,745,16.9494,0.0,101.0659
11,trip,13541574,100,08:54,09:33,32040,34380,Marpole Loop,22nd Street Station,12027,10929,15.0353,0.0,86.03059999999999
11,trip,13541647,100,09:45,10:32,35100,37920,22nd Street Station,Marpole Loop,5989,745,16.9494,0.0,69.0812
11,trip,13541515,100,10:41,11:20,38460,40800,Marpole Loop,22nd Street Station,12027,10929,15.3368,0.0,53.7444
11,trip,13542085,101,12:14,12:50,44040,46200,22nd Street Station,Lougheed Station,2397,8691,12.1355,0.0,41.6089
11,trip,13542120,101,13:01,13:37,46860,49020,Lougheed Station,22nd Street Station,8689,10929,12.1306,0.0,29.478299999999997
12,trip,13541532,100,06:24,07:01,23040,25260,Marpole Loop,22nd Street Station,12027,10929,15.0353,0.0,134.9647
12,trip,13541700,100,07:02,07:50,25320,28200,22nd Street Station,Marpole Loop,5989,745,16.9494,0.0,118.0153
12,trip,13541563,100,08:13,08:53,29580,31980,Marpole Loop,22nd Street Station,12027,10929,15.0353,0.0,102.97999999999999
12,trip,13541674,100,10:29,11:15,37740,40500,22nd Street Station,Marpole Loop,5989,745,16.9494,0.0,86.03059999999999
12,trip,13541531,100,11:26,12:05,41160,43500,Marpole Loop,22nd Street Station,12027,10929,15.0353,0.0,70.99529999999999
12,trip,13541710,100,13:08,13:56,47280,50160,22nd Street Station,Marpole Loop,5989,745,17.8373,0.0,53.15799999999999
13,trip,13541699,100,06:27,07:10,23220,25800,22nd Street Station,Marpole Loop,5989,745,16.9494,0.0,133.0506
13,trip,13541606,100,07:14,07:52,26040,28320,Marpole Loop,22nd Street Station,12027,10929,15.3368,0.0,117.7138
13,trip,13541664,100,07:56,08:46,28560,31560,22nd Street Station,Marpole Loop,5989,745,16.9494,0.0,100.76440000000001
13,trip,13541524,100,08:46,09:25,31560,33900,Marpole Loop,22nd Street Station,12027,10929,15.0353,0.0,85.72910000000002
13,trip,13542088,101,10:15,10:49,36900,38940,22nd Street Station,Lougheed Station,2397,8691,12.1355,0.0,73.59360000000001
13,trip,13542151,101,11:01,11:36,39660,41760,Lougheed Station,22nd Street Station,8689,10929,12.1306,0.0,61.46300000000001
13,trip,13541670,100,11:40,12:26,42000,44760,22nd Street Station,Marpole Loop,5989,745,16.9494,0.0,44.51360000000001
13,trip,13541572,100,12:39,13:21,45540,48060,Marpole Loop,22nd Street Station,12027,10929,15.0353,0.0,29.47830000000001
14,trip,13541613,100,06:32,07:09,23520,25740,Marpole Loop,22nd Street Station,12027,10929,15.3368,0.0,134.6632
14,trip,13542092,101,07:20,07:55,26400,28500,22nd Street Station,Lougheed Station,2397,8691,12.1355,0.0,122.52769999999998
14,trip,13542142,101,08:02,08:42,28920,31320,Lougheed Station,22nd Street Station,8689,10929,12.1306,0.0,110.39709999999998
14,trip,13541721,100,08:48,09:38,31680,34680,22nd Street Station,Marpole Loop,5989,745,17.8373,0.0,92.55979999999998
14,trip,13541562,100,10:01,10:40,36060,38400,Marpole Loop,22nd Street Station,12027,10929,15.0353,0.0,77.52449999999999
14,trip,13541656,100,12:25,13:11,44700,47460,22nd Street Station,Marpole Loop,5989,745,16.9494,0.0,60.57509999999999
14,trip,13541521,100,13:24,14:07,48240,50820,Marpole Loop,22nd Street Station,12027,10929,15.0353,0.0,45.53979999999999
15,trip,13541714,100,06:33,07:16,23580,26160,22nd Street Station,Marpole Loop,5989,745,16.9494,0.0,133.0506
15,trip,13541579,100,07:35,08:13,27300,29580,Marpole Loop,22nd Street Station,12027,10929,15.0353,0.0,118.0153
15,trip,13541694,100,08:30,09:20,30600,33600,22nd Street Station,Marpole Loop,5989,745,16.9494,0.0,101.0659
15,trip,13541575,100,09:20,09:59,33600,35940,Marpole Loop,22nd Street Station,12027,10929,15.0353,0.0,86.03059999999999
15,trip,13541673,100,11:25,12:11,41100,43860,22nd Street Station,Marpole Loop,5989,745,16.9494,0.0,69.0812
15,trip,13541586,100,12:24,13:06,44640,47160,Marpole Loop,22nd Street Station,12027,10929,15.0353,0.0,54.045899999999996
15,trip,13541655,100,13:25,14:11,48300,51060,22nd Street Station,Marpole Loop,5989,745,16.9494,0.0,37.09649999999999
16,trip,13542094,101,06:39,07:12,23940,25920,22nd Street Station,Lougheed Station,2397,8691,12.1355,0.0,137.8645
16,trip,13542152,101,07:20,07:58,26400,28680,Lougheed Station,22nd Street Station,8689,10929,12.1306,0.0,125.73389999999999
16,trip,13542117,101,08:05,08:42,29100,31320,22nd Street Station,Lougheed Station,2397,8691,12.1355,0.0,113.5984
16,trip,13542146,101,08:47,09:24,31620,33840,Lougheed Station,22nd Street Station,8689,10929,12.1306,0.0,101.4678
17,trip,13541594,100,06:40,07:17,24000,26220,Marpole Loop,22nd Street Station,12027,10929,15.0353,0.0,134.9647
17,trip,13541645,100,07:22,08:12,26520,29520,22nd Street Station,Marpole Loop,5989,745,16.9494,0.0,118.0153
17,trip,13541518,100,08:20,09:00,30000,32400,Marpole Loop,22nd Street Station,12027,10929,15.0353,0.0,102.97999999999999
17,trip,13541676,100,09:15,10:02,33300,36120,22nd Street Station,Marpole Loop,5989,745,16.9494,0.0,86.03059999999999
17,trip,13541553,100,10:12,10:51,36720,39060,Marpole Loop,22nd Street Station,12027,10929,15.0353,0.0,70.99529999999999
17,trip,13541681,100,10:55,11:41,39300,42060,22nd Street Station,Marpole Loop,5989,745,16.9494,0.0,54.04589999999999
17,trip,13541513,100,11:54,12:37,42840,45420,Marpole Loop,22nd Street Station,12027,10929,15.3368,0.0,38.70909999999999
17,trip,13541667,100,12:55,13:41,46500,49260,22nd Street Station,Marpole Loop,5989,745,16.9494,0.0,21.75969999999999
17,trip,13541559,100,13:54,14:37,50040,52620,Marpole Loop,22nd Street Station,12027,10929,15.3368,0.0,6.422899999999991
18,trip,13541629,100,06:45,07:33,24300,27180,22nd Street Station,Marpole Loop,5989,745,16.9494,0.0,133.0506
18,trip,13541600,100,07:41,08:19,27660,29940,Marpole Loop,22nd Street Station,12027,10929,15.0353,0.0,118.0153
18,trip,13541661,100,08:21,09:11,30060,33060,22nd Street Station,Marpole Loop,5989,745,17.8373,0.0,100.178
18,trip,13541517,100,09:11,09:50,33060,35400,Marpole Loop,22nd Street Station,12027,10929,15.3368,0.0,84.8412
18,trip,13541624,100,10:00,10:47,36000,38820,22nd Street Station,Marpole Loop,5989,745,16.9494,0.0,67.8918
18,trip,13541561,100,10:56,11:35,39360,41700,Marpole Loop,22nd Street Station,12027,10929,15.0353,0.0,52.856500000000004
19,trip,13541565,100,06:54,07:31,24840,27060,Marpole Loop,22nd Street Station,12027,10929,15.0353,0.0,134.9647
19,trip,13541701,100,07:35,08:25,27300,30300,22nd Street Station,Marpole Loop,5989,745,16.9494,0.0,118.0153
19,trip,13541581,100,08:26,09:06,30360,32760,Marpole Loop,22nd Street Station,12027,10929,15.3368,0.0,102.6785
19,trip,13542087,101,09:10,09:46,33000,35160,22nd Street Station,Lougheed Station,2397,8691,12.1355,0.0,90.543
19,trip,13542149,101,10:02,10:36,36120,38160,Lougheed Station,22nd Street Station,8689,10929,12.1306,0.0,78.4124
19,trip,13541668,100,12:40,13:26,45600,48360,22nd Street Station,Marpole Loop,5989,745,16.9494,0.0,61.46300000000001
19,trip,13541548,100,13:39,14:22,49140,51720,Marpole Loop,22nd Street Station,12027,10929,15.0353,0.0,46.42770000000001
